Schedule from GanttProject, 2016-06-27 to 2016-09-19.

## Calendars

- Project calendar: Mon-Sun working.

## Schedule

| ID | WBS | Task | Duration | Start | Finish | Complete |
| --- | --- | --- | --- | --- | --- | --- |
| 1 | 1 | **百思陵园** | 85d | 2016-06-27 | 2016-09-19 | 4% |
| 2 | 1.1 | **设计** | 50d | 2016-06-27 | 2016-08-15 | 11% |
| 3 | 1.1.1 | 低保真 | 5d | 2016-06-27 | 2016-07-01 | 100% |
| 4 | 1.1.2 | 高保真 | 23d | 2016-07-04 | 2016-07-26 |  |
| 5 | 1.1.3 | 数据模型 | 3d | 2016-07-05 | 2016-07-07 | 100% |
| 6 | 1.1.4 | 重要功能业务逻辑 | 40d | 2016-07-07 | 2016-08-15 |  |
| 7 | 1.2 | **编码** | 82d | 2016-06-30 | 2016-09-19 |  |
| 8 | 1.2.1 | U3D | 1d | 2016-06-30 | 2016-06-30 |  |
| 9 | 1.2.2 | **JAVA** | 82d | 2016-06-30 | 2016-09-19 |  |
| 10 | 1.2.2.1 | **接口功能** | 82d | 2016-06-30 | 2016-09-19 |  |
| 11 | 1.2.2.1.1 | **会员** | 47d | 2016-06-30 | 2016-08-15 |  |
| 12 | 1.2.2.1.1.1 | 会员账号注册 | 5d | 2016-08-11 | 2016-08-15 |  |
| 13 | 1.2.2.1.1.2 | 会员登录 | 5d | 2016-08-11 | 2016-08-15 |  |
| 14 | 1.2.2.1.1.3 | 会员登出 | 5d | 2016-08-11 | 2016-08-15 |  |
| 15 | 1.2.2.1.1.4 | 会员资料查询 | 5d | 2016-08-11 | 2016-08-15 |  |
| 16 | 1.2.2.1.1.5 | 会员资料修改 | 5d | 2016-08-11 | 2016-08-15 |  |
| 17 | 1.2.2.1.1.6 | **钱包** | 1d | 2016-06-30 | 2016-06-30 |  |
| 18 | 1.2.2.1.1.6.1 | 查询钱包信息 | 1d | 2016-06-30 | 2016-06-30 |  |
| 19 | 1.2.2.1.1.6.2 | 现金充值 | 1d | 2016-06-30 | 2016-06-30 |  |
| 20 | 1.2.2.1.1.7 | **我的订单** | 1d | 2016-06-30 | 2016-06-30 |  |
| 21 | 1.2.2.1.1.7.1 | 分页列表查询 | 1d | 2016-06-30 | 2016-06-30 |  |
| 22 | 1.2.2.1.1.7.2 | 列表快捷筛选 | 1d | 2016-06-30 | 2016-06-30 |  |
| 23 | 1.2.2.1.1.7.3 | 订单详情 | 1d | 2016-06-30 | 2016-06-30 |  |
| 24 | 1.2.2.1.1.7.4 | 订单支付 | 1d | 2016-06-30 | 2016-06-30 |  |

| ID | WBS | Task | Duration | Start | Finish |
| --- | --- | --- | --- | --- | --- |
| 25 | 1.2.2.1.1.8 | **我的留言** | 1d | 2016-06-30 | 2016-06-30 |
| 26 | 1.2.2.1.1.8.1 | 分页列表查询 | 1d | 2016-06-30 | 2016-06-30 |
| 27 | 1.2.2.1.1.8.2 | 留言删除 | 1d | 2016-06-30 | 2016-06-30 |
| 28 | 1.2.2.1.1.9 | **我的店铺** | 1d | 2016-06-30 | 2016-06-30 |
| 29 | 1.2.2.1.1.9.1 | 分页查询已发布商品 | 1d | 2016-06-30 | 2016-06-30 |
| 30 | 1.2.2.1.1.9.2 | 商品详情 | 1d | 2016-06-30 | 2016-06-30 |
| 31 | 1.2.2.1.1.9.3 | 分页查询快捷筛选 | 1d | 2016-06-30 | 2016-06-30 |
| 32 | 1.2.2.1.1.9.4 | 发布商品 | 1d | 2016-06-30 | 2016-06-30 |
| 33 | 1.2.2.1.1.9.5 | 下架商品 | 1d | 2016-06-30 | 2016-06-30 |
| 34 | 1.2.2.1.1.9.6 | **店铺订单** | 1d | 2016-06-30 | 2016-06-30 |
| 35 | 1.2.2.1.1.9.6.1 | 分页列表查询销售订单 | 1d | 2016-06-30 | 2016-06-30 |
| 36 | 1.2.2.1.1.9.6.2 | 订单详情 | 1d | 2016-06-30 | 2016-06-30 |
| 37 | 1.2.2.1.1.9.6.3 | 订单销售总额统计 | 1d | 2016-06-30 | 2016-06-30 |
| 38 | 1.2.2.1.1.10 | **背包** | 1d | 2016-06-30 | 2016-06-30 |
| 39 | 1.2.2.1.1.10.1 | 查询商品分类集合 | 1d | 2016-06-30 | 2016-06-30 |
| 40 | 1.2.2.1.1.10.2 | 根据分类查询商品集合分页列表 | 1d | 2016-06-30 | 2016-06-30 |
| 41 | 1.2.2.1.1.10.3 | 查询商品详情 | 1d | 2016-06-30 | 2016-06-30 |
| 42 | 1.2.2.1.1.10.4 | 商品使用 | 1d | 2016-06-30 | 2016-06-30 |
| 43 | 1.2.2.1.2 | **陵园** | 82d | 2016-06-30 | 2016-09-19 |
| 44 | 1.2.2.1.2.1 | 查找陵园基本信息 | 1d | 2016-08-20 | 2016-08-20 |
| 45 | 1.2.2.1.2.2 | 非公开陵园密码进入 | 1d | 2016-08-20 | 2016-08-20 |
| 46 | 1.2.2.1.2.3 | 背景音乐集合查询 | 1d | 2016-08-22 | 2016-08-22 |
| 47 | 1.2.2.1.2.4 | 统计陵园容量消耗明细 | 1d | 2016-08-22 | 2016-08-22 |
| 48 | 1.2.2.1.2.5 | **背景音乐管理** | 1d | 2016-06-30 | 2016-06-30 |
| 49 | 1.2.2.1.2.5.1 | 音乐分页列表 | 1d | 2016-06-30 | 2016-06-30 |
| 50 | 1.2.2.1.2.5.2 | 音乐上传 | 1d | 2016-06-30 | 2016-06-30 |
| 51 | 1.2.2.1.2.5.3 | 音乐删除 | 1d | 2016-06-30 | 2016-06-30 |

| ID | WBS | Task | Duration | Start | Finish |
| --- | --- | --- | --- | --- | --- |
| 52 | 1.2.2.1.2.6 | **授权代管理** | 1d | 2016-06-30 | 2016-06-30 |
| 53 | 1.2.2.1.2.6.1 | 对他人授予权限 | 1d | 2016-06-30 | 2016-06-30 |
| 54 | 1.2.2.1.2.6.2 | 分页查询已授权列表 | 1d | 2016-06-30 | 2016-06-30 |
| 55 | 1.2.2.1.2.6.3 | 权限回收 | 1d | 2016-06-30 | 2016-06-30 |
| 56 | 1.2.2.1.2.7 | **公告管理** | 1d | 2016-06-30 | 2016-06-30 |
| 57 | 1.2.2.1.2.7.1 | 分页内容查询 | 1d | 2016-06-30 | 2016-06-30 |
| 58 | 1.2.2.1.2.7.2 | 增加公告信息 | 1d | 2016-06-30 | 2016-06-30 |
| 59 | 1.2.2.1.2.7.3 | 修改编辑公告 | 1d | 2016-06-30 | 2016-06-30 |
| 60 | 1.2.2.1.2.7.4 | 删除公告 | 1d | 2016-06-30 | 2016-06-30 |
| 61 | 1.2.2.1.2.8 | **动物园** | 1d | 2016-06-30 | 2016-06-30 |
| 62 | 1.2.2.1.2.8.1 | 已有动物集合查询 | 1d | 2016-06-30 | 2016-06-30 |
| 63 | 1.2.2.1.2.8.2 | 动物详情查询 | 1d | 2016-06-30 | 2016-06-30 |
| 64 | 1.2.2.1.2.8.3 | 查询背包动物集合 | 1d | 2016-06-30 | 2016-06-30 |
| 65 | 1.2.2.1.2.8.4 | 背包动物饲养 | 1d | 2016-06-30 | 2016-06-30 |
| 66 | 1.2.2.1.2.8.5 | 喂养 | 1d | 2016-06-30 | 2016-06-30 |
| 67 | 1.2.2.1.2.8.6 | 收取 | 1d | 2016-06-30 | 2016-06-30 |
| 68 | 1.2.2.1.2.9 | **植物园** | 1d | 2016-06-30 | 2016-06-30 |
| 69 | 1.2.2.1.2.9.1 | 已有植物集合查询 | 1d | 2016-06-30 | 2016-06-30 |
| 70 | 1.2.2.1.2.9.2 | 植物详情查询 | 1d | 2016-06-30 | 2016-06-30 |
| 71 | 1.2.2.1.2.9.3 | 查询背包植物集合 | 1d | 2016-06-30 | 2016-06-30 |
| 72 | 1.2.2.1.2.9.4 | 背包植物种植 | 1d | 2016-06-30 | 2016-06-30 |
| 73 | 1.2.2.1.2.9.5 | 施肥 | 1d | 2016-06-30 | 2016-06-30 |
| 74 | 1.2.2.1.2.9.6 | 收割 | 1d | 2016-06-30 | 2016-06-30 |
| 75 | 1.2.2.1.2.10 | **宠物墓园** | 1d | 2016-06-30 | 2016-06-30 |
| 76 | 1.2.2.1.2.10.1 | 查询宠物墓碑集合 | 1d | 2016-06-30 | 2016-06-30 |
| 77 | 1.2.2.1.2.10.2 | 创建宠物墓碑 | 1d | 2016-06-30 | 2016-06-30 |
| 78 | 1.2.2.1.2.10.3 | 删除宠物墓碑 | 1d | 2016-06-30 | 2016-06-30 |
| 79 | 1.2.2.1.2.10.4 | 墓碑修改（单人升多人、禁止多人降单人） | 1d | 2016-06-30 | 2016-06-30 |

| ID | WBS | Task | Duration | Start | Finish |
| --- | --- | --- | --- | --- | --- |
| 80 | 1.2.2.1.2.10.5 | **功能墙** | 1d | 2016-06-30 | 2016-06-30 |
| 81 | 1.2.2.1.2.10.5.1 | **纪念动态** | 1d | 2016-06-30 | 2016-06-30 |
| 82 | 1.2.2.1.2.10.5.1.1 | 分页查询列表 | 1d | 2016-06-30 | 2016-06-30 |
| 83 | 1.2.2.1.2.10.5.1.2 | 保存纪念动态（提供接口、交由界面触发） | 1d | 2016-06-30 | 2016-06-30 |
| 84 | 1.2.2.1.2.10.5.2 | **宠物相册** | 1d | 2016-06-30 | 2016-06-30 |
| 85 | 1.2.2.1.2.10.5.2.1 | 查询相册集合 | 1d | 2016-06-30 | 2016-06-30 |
| 86 | 1.2.2.1.2.10.5.2.2 | 分页查询相片集合 | 1d | 2016-06-30 | 2016-06-30 |
| 87 | 1.2.2.1.2.10.5.2.3 | 查询相片详情 | 1d | 2016-06-30 | 2016-06-30 |
| 88 | 1.2.2.1.2.10.5.2.4 | 创建相册 | 1d | 2016-06-30 | 2016-06-30 |
| 89 | 1.2.2.1.2.10.5.2.5 | 添加相片 | 1d | 2016-06-30 | 2016-06-30 |
| 90 | 1.2.2.1.2.10.5.2.6 | 删除相册 | 1d | 2016-06-30 | 2016-06-30 |
| 91 | 1.2.2.1.2.10.5.2.7 | 删除相片 | 1d | 2016-06-30 | 2016-06-30 |
| 92 | 1.2.2.1.2.10.5.3 | **宠物视频** | 1d | 2016-06-30 | 2016-06-30 |
| 93 | 1.2.2.1.2.10.5.3.1 | 查询视频目录集合 | 1d | 2016-06-30 | 2016-06-30 |
| 94 | 1.2.2.1.2.10.5.3.2 | 分页查询视频集合 | 1d | 2016-06-30 | 2016-06-30 |
| 95 | 1.2.2.1.2.10.5.3.3 | 查询视频详情 | 1d | 2016-06-30 | 2016-06-30 |
| 96 | 1.2.2.1.2.10.5.3.4 | 创建视频目录 | 1d | 2016-06-30 | 2016-06-30 |
| 97 | 1.2.2.1.2.10.5.3.5 | 增加视频 | 1d | 2016-06-30 | 2016-06-30 |
| 98 | 1.2.2.1.2.10.5.3.6 | 删除视频目录 | 1d | 2016-06-30 | 2016-06-30 |
| 99 | 1.2.2.1.2.10.5.3.7 | 删除视频 | 1d | 2016-06-30 | 2016-06-30 |
| 100 | 1.2.2.1.2.11 | **人物墓园** | 26d | 2016-08-25 | 2016-09-19 |
| 101 | 1.2.2.1.2.11.1 | 查询人物墓碑集合 | 2d | 2016-08-25 | 2016-08-26 |
| 102 | 1.2.2.1.2.11.2 | 创建人物墓碑 | 2d | 2016-08-25 | 2016-08-26 |
| 103 | 1.2.2.1.2.11.3 | 删除人物墓碑 | 2d | 2016-08-25 | 2016-08-26 |
| 104 | 1.2.2.1.2.11.4 | 墓碑修改（单人升多人、禁止多人降单人） | 2d | 2016-08-25 | 2016-08-26 |

| ID | WBS | Task | Duration | Start | Finish |
| --- | --- | --- | --- | --- | --- |
| 105 | 1.2.2.1.2.11.5 | **功能墙** | 22d | 2016-08-29 | 2016-09-19 |
| 106 | 1.2.2.1.2.11.5.1 | **生平介绍** | 2d | 2016-08-29 | 2016-08-30 |
| 107 | 1.2.2.1.2.11.5.1.1 | 查询介绍 | 2d | 2016-08-29 | 2016-08-30 |
| 108 | 1.2.2.1.2.11.5.1.2 | 添加介绍 | 2d | 2016-08-29 | 2016-08-30 |
| 109 | 1.2.2.1.2.11.5.1.3 | 修改介绍 | 2d | 2016-08-29 | 2016-08-30 |
| 110 | 1.2.2.1.2.11.5.2 | **遗言遗愿** | 2d | 2016-08-31 | 2016-09-01 |
| 111 | 1.2.2.1.2.11.5.2.1 | 查询 | 2d | 2016-08-31 | 2016-09-01 |
| 112 | 1.2.2.1.2.11.5.2.2 | 添加 | 2d | 2016-08-31 | 2016-09-01 |
| 113 | 1.2.2.1.2.11.5.2.3 | 修改 | 2d | 2016-08-31 | 2016-09-01 |
| 114 | 1.2.2.1.2.11.5.3 | **参祭留言** | 2d | 2016-09-02 | 2016-09-03 |
| 115 | 1.2.2.1.2.11.5.3.1 | 分页查询集合 | 2d | 2016-09-02 | 2016-09-03 |
| 116 | 1.2.2.1.2.11.5.3.2 | 添加留言 | 2d | 2016-09-02 | 2016-09-03 |
| 117 | 1.2.2.1.2.11.5.3.3 | 回复留言 | 2d | 2016-09-02 | 2016-09-03 |
| 118 | 1.2.2.1.2.11.5.3.4 | 删除留言 | 2d | 2016-09-02 | 2016-09-03 |
| 119 | 1.2.2.1.2.11.5.4 | **纪念动态** | 2d | 2016-09-05 | 2016-09-06 |
| 120 | 1.2.2.1.2.11.5.4.1 | 分页查询列表 | 2d | 2016-09-05 | 2016-09-06 |
| 121 | 1.2.2.1.2.11.5.4.2 | 保存纪念动态（提供接口、交由界面触发） | 2d | 2016-09-05 | 2016-09-06 |
| 122 | 1.2.2.1.2.11.5.5 | **祭文悼词** | 2d | 2016-09-07 | 2016-09-08 |
| 123 | 1.2.2.1.2.11.5.5.1 | 分页查询集合 | 2d | 2016-09-07 | 2016-09-08 |
| 124 | 1.2.2.1.2.11.5.5.2 | 查询详情 | 2d | 2016-09-07 | 2016-09-08 |
| 125 | 1.2.2.1.2.11.5.5.3 | 添加 | 2d | 2016-09-07 | 2016-09-08 |
| 126 | 1.2.2.1.2.11.5.6 | **人物相册** | 4d | 2016-09-09 | 2016-09-12 |
| 127 | 1.2.2.1.2.11.5.6.1 | 查询相册集合 | 4d | 2016-09-09 | 2016-09-12 |
| 128 | 1.2.2.1.2.11.5.6.2 | 分页查询相片集合 | 4d | 2016-09-09 | 2016-09-12 |
| 129 | 1.2.2.1.2.11.5.6.3 | 查询相片详情 | 4d | 2016-09-09 | 2016-09-12 |
| 130 | 1.2.2.1.2.11.5.6.4 | 创建相册 | 4d | 2016-09-09 | 2016-09-12 |
| 131 | 1.2.2.1.2.11.5.6.5 | 添加相片 | 4d | 2016-09-09 | 2016-09-12 |
| 132 | 1.2.2.1.2.11.5.6.6 | 删除相册 | 4d | 2016-09-09 | 2016-09-12 |
| 133 | 1.2.2.1.2.11.5.6.7 | 删除相片 | 4d | 2016-09-09 | 2016-09-12 |

| ID | WBS | Task | Duration | Start | Finish |
| --- | --- | --- | --- | --- | --- |
| 134 | 1.2.2.1.2.11.5.7 | **人物视频** | 3d | 2016-09-13 | 2016-09-15 |
| 135 | 1.2.2.1.2.11.5.7.1 | 查询视频目录集合 | 3d | 2016-09-13 | 2016-09-15 |
| 136 | 1.2.2.1.2.11.5.7.2 | 分页查询视频集合 | 3d | 2016-09-13 | 2016-09-15 |
| 137 | 1.2.2.1.2.11.5.7.3 | 查询视频详情 | 3d | 2016-09-13 | 2016-09-15 |
| 138 | 1.2.2.1.2.11.5.7.4 | 创建视频目录 | 3d | 2016-09-13 | 2016-09-15 |
| 139 | 1.2.2.1.2.11.5.7.5 | 增加视频 | 3d | 2016-09-13 | 2016-09-15 |
| 140 | 1.2.2.1.2.11.5.7.6 | 删除视频目录 | 3d | 2016-09-13 | 2016-09-15 |
| 141 | 1.2.2.1.2.11.5.7.7 | 删除视频 | 3d | 2016-09-13 | 2016-09-15 |
| 142 | 1.2.2.1.2.11.5.8 | **生前作品** | 4d | 2016-09-16 | 2016-09-19 |
| 143 | 1.2.2.1.2.11.5.8.1 | 查询作品目录集合 | 4d | 2016-09-16 | 2016-09-19 |
| 144 | 1.2.2.1.2.11.5.8.2 | 分页查询作品集合 | 4d | 2016-09-16 | 2016-09-19 |
| 145 | 1.2.2.1.2.11.5.8.3 | 查询作品详情 | 4d | 2016-09-16 | 2016-09-19 |
| 146 | 1.2.2.1.2.11.5.8.4 | 创建作品目录 | 4d | 2016-09-16 | 2016-09-19 |
| 147 | 1.2.2.1.2.11.5.8.5 | 添加作品 | 4d | 2016-09-16 | 2016-09-19 |
| 148 | 1.2.2.1.2.11.5.8.6 | 删除作品 | 4d | 2016-09-16 | 2016-09-19 |
| 149 | 1.2.2.1.2.11.5.8.7 | 删除作品目录 | 4d | 2016-09-16 | 2016-09-19 |
| 150 | 1.2.2.1.2.12 | 添加陵园 | 1d | 2016-08-16 | 2016-08-16 |
| 151 | 1.2.2.1.2.13 | 根据地区查询陵园集合 | 2d | 2016-08-17 | 2016-08-18 |
| 152 | 1.2.2.1.2.14 | 根据陵园编号查询归属地陵园集合 | 2d | 2016-08-17 | 2016-08-18 |
| 153 | 1.2.2.1.2.15 | 根据会员信息查询我的陵园集合 | 1d | 2016-08-19 | 2016-08-19 |
| 154 | 1.2.2.1.2.16 | 公众人物祭奠申请 | 1d | 2016-08-19 | 2016-08-19 |
| 155 | 1.2.2.1.3 | **社区** | 1d | 2016-06-30 | 2016-06-30 |
| 156 | 1.2.2.1.3.1 | 传送门 | 1d | 2016-06-30 | 2016-06-30 |
| 157 | 1.2.2.1.4 | **商城** | 1d | 2016-06-30 | 2016-06-30 |
| 158 | 1.2.2.1.4.1 | 商品分类集合查询 | 1d | 2016-06-30 | 2016-06-30 |
| 159 | 1.2.2.1.4.2 | 分页查询分类商品集合 | 1d | 2016-06-30 | 2016-06-30 |
| 160 | 1.2.2.1.4.3 | 商品详情查询 | 1d | 2016-06-30 | 2016-06-30 |
| 161 | 1.2.2.1.4.4 | 加入购物车 | 1d | 2016-06-30 | 2016-06-30 |
| 162 | 1.2.2.1.4.5 | 移出购物车 | 1d | 2016-06-30 | 2016-06-30 |
| 163 | 1.2.2.1.4.6 | 购物车转订单 | 1d | 2016-06-30 | 2016-06-30 |

| ID | WBS | Task | Duration | Start | Finish | 描述 |
| --- | --- | --- | --- | --- | --- | --- |
| 164 | 1.2.2.2 | **后台功能** | 59d | 2016-06-30 | 2016-08-27 |  |
| 165 | 1.2.2.2.1 | 维护U3D登录用户session | 4d | 2016-07-08 | 2016-07-11 |  |
| 166 | 1.2.2.2.2 | IM | 6d | 2016-07-11 | 2016-07-16 |  |
| 167 | 1.2.2.2.3 | 多人在线用户分管 | 3d | 2016-07-18 | 2016-07-20 | 将在线的且许可的多人系统中进行陵园为单位进行隔离管理 |
| 168 | 1.2.2.2.4 | 多人在线数据转发 | 3d | 2016-07-21 | 2016-07-23 |  |
| 169 | 1.2.2.2.5 | 手机短信API接入 | 3d | 2016-07-25 | 2016-07-27 |  |
| 170 | 1.2.2.2.6 | 管理员登录 | 1d | 2016-07-28 | 2016-07-28 |  |
| 171 | 1.2.2.2.7 | 管理员登出 | 1d | 2016-07-28 | 2016-07-28 |  |
| 172 | 1.2.2.2.8 | **系统用户权限管理** | 5d | 2016-07-29 | 2016-08-02 |  |
| 173 | 1.2.2.2.8.1 | **系统角色管理** | 2d | 2016-07-29 | 2016-07-30 |  |
| 174 | 1.2.2.2.8.1.1 | **增加** | 2d | 2016-07-29 | 2016-07-30 |  |
| 175 | 1.2.2.2.8.1.1.1 | 绑定菜单 | 2d | 2016-07-29 | 2016-07-30 |  |
| 176 | 1.2.2.2.8.1.2 | **修改** | 2d | 2016-07-29 | 2016-07-30 |  |
| 177 | 1.2.2.2.8.1.2.1 | 修改绑定菜单 | 2d | 2016-07-29 | 2016-07-30 |  |
| 178 | 1.2.2.2.8.1.3 | **删除** | 2d | 2016-07-29 | 2016-07-30 |  |
| 179 | 1.2.2.2.8.1.3.1 | 删除绑定菜单数据 | 2d | 2016-07-29 | 2016-07-30 |  |
| 180 | 1.2.2.2.8.1.4 | **分页列表查询** | 2d | 2016-07-29 | 2016-07-30 |  |
| 181 | 1.2.2.2.8.1.4.1 | 列表快捷筛选 | 2d | 2016-07-29 | 2016-07-30 |  |
| 182 | 1.2.2.2.8.1.5 | 内容详情 | 2d | 2016-07-29 | 2016-07-30 |  |
| 183 | 1.2.2.2.8.2 | **系统用户管理** | 2d | 2016-08-01 | 2016-08-02 |  |
| 184 | 1.2.2.2.8.2.1 | **增加用户** | 2d | 2016-08-01 | 2016-08-02 |  |
| 185 | 1.2.2.2.8.2.1.1 | 绑定角色 | 2d | 2016-08-01 | 2016-08-02 |  |
| 186 | 1.2.2.2.8.2.2 | **修改用户** | 2d | 2016-08-01 | 2016-08-02 |  |
| 187 | 1.2.2.2.8.2.2.1 | 编辑绑定角色 | 2d | 2016-08-01 | 2016-08-02 |  |

| ID | WBS | Task | Duration | Start | Finish |
| --- | --- | --- | --- | --- | --- |
| 188 | 1.2.2.2.8.2.3 | **删除用户** | 2d | 2016-08-01 | 2016-08-02 |
| 189 | 1.2.2.2.8.2.3.1 | 删除绑定角色 | 2d | 2016-08-01 | 2016-08-02 |
| 190 | 1.2.2.2.8.2.4 | **分页列表查询** | 2d | 2016-08-01 | 2016-08-02 |
| 191 | 1.2.2.2.8.2.4.1 | 列表快捷筛选 | 2d | 2016-08-01 | 2016-08-02 |
| 192 | 1.2.2.2.8.2.5 | 内容详情 | 2d | 2016-08-01 | 2016-08-02 |
| 193 | 1.2.2.2.9 | **数据管理** | 59d | 2016-06-30 | 2016-08-27 |
| 194 | 1.2.2.2.9.1 | **模型及商品分类管理** | 2d | 2016-08-03 | 2016-08-04 |
| 195 | 1.2.2.2.9.1.1 | 增加分类 | 2d | 2016-08-03 | 2016-08-04 |
| 196 | 1.2.2.2.9.1.2 | 修改分类 | 2d | 2016-08-03 | 2016-08-04 |
| 197 | 1.2.2.2.9.1.3 | 删除分类 | 2d | 2016-08-03 | 2016-08-04 |
| 198 | 1.2.2.2.9.1.4 | 分页列表查找 | 2d | 2016-08-03 | 2016-08-04 |
| 199 | 1.2.2.2.9.2 | **模型管理** | 3d | 2016-08-04 | 2016-08-06 |
| 200 | 1.2.2.2.9.2.1 | **分页模型列表** | 3d | 2016-08-04 | 2016-08-06 |
| 201 | 1.2.2.2.9.2.1.1 | 快捷筛选 | 3d | 2016-08-04 | 2016-08-06 |
| 202 | 1.2.2.2.9.2.2 | 模型详情 | 3d | 2016-08-04 | 2016-08-06 |
| 203 | 1.2.2.2.9.2.3 | **增加模型** | 3d | 2016-08-04 | 2016-08-06 |
| 204 | 1.2.2.2.9.2.3.1 | 绑定模型分类 | 3d | 2016-08-04 | 2016-08-06 |
| 205 | 1.2.2.2.9.2.4 | **修改模型** | 3d | 2016-08-04 | 2016-08-06 |
| 206 | 1.2.2.2.9.2.4.1 | 修改绑定模型分类 | 3d | 2016-08-04 | 2016-08-06 |
| 207 | 1.2.2.2.9.2.5 | **删除模型** | 3d | 2016-08-04 | 2016-08-06 |
| 208 | 1.2.2.2.9.2.5.1 | 删除绑定模型分类 | 3d | 2016-08-04 | 2016-08-06 |
| 209 | 1.2.2.2.9.3 | **特殊节日管理** | 3d | 2016-08-08 | 2016-08-10 |
| 210 | 1.2.2.2.9.3.1 | 分页列表查询 | 3d | 2016-08-08 | 2016-08-10 |
| 211 | 1.2.2.2.9.3.2 | 增加节日 | 3d | 2016-08-08 | 2016-08-10 |
| 212 | 1.2.2.2.9.3.3 | 删除节日 | 3d | 2016-08-08 | 2016-08-10 |
| 213 | 1.2.2.2.9.3.4 | 节日前短信推送 | 3d | 2016-08-08 | 2016-08-10 |

| ID | WBS | Task | Duration | Start | Finish |
| --- | --- | --- | --- | --- | --- |
| 214 | 1.2.2.2.9.4 | **陵园管理** | 5d | 2016-08-23 | 2016-08-27 |
| 215 | 1.2.2.2.9.4.1 | 分页列表查询 | 2d | 2016-08-23 | 2016-08-24 |
| 216 | 1.2.2.2.9.4.2 | 内容详情 | 2d | 2016-08-23 | 2016-08-24 |
| 217 | 1.2.2.2.9.4.3 | 分页列表查询陵园墓园纪念人 | 1d | 2016-08-27 | 2016-08-27 |
| 218 | 1.2.2.2.9.4.4 | 陵园墓园纪念人详情 | 1d | 2016-08-27 | 2016-08-27 |
| 219 | 1.2.2.2.9.5 | **商城管理** | 1d | 2016-06-30 | 2016-06-30 |
| 220 | 1.2.2.2.9.5.1 | **商品管理** | 1d | 2016-06-30 | 2016-06-30 |
| 221 | 1.2.2.2.9.5.1.1 | **分页列表查找** | 1d | 2016-06-30 | 2016-06-30 |
| 222 | 1.2.2.2.9.5.1.1.1 | 快捷筛选 | 1d | 2016-06-30 | 2016-06-30 |
| 223 | 1.2.2.2.9.5.1.2 | 内容详情 | 1d | 2016-06-30 | 2016-06-30 |
| 224 | 1.2.2.2.9.5.1.3 | **增加商品** | 1d | 2016-06-30 | 2016-06-30 |
| 225 | 1.2.2.2.9.5.1.3.1 | 绑定模型 | 1d | 2016-06-30 | 2016-06-30 |
| 226 | 1.2.2.2.9.5.1.3.2 | 绑定商品分类 | 1d | 2016-06-30 | 2016-06-30 |
| 227 | 1.2.2.2.9.5.1.4 | **修改商品** | 1d | 2016-06-30 | 2016-06-30 |
| 228 | 1.2.2.2.9.5.1.4.1 | 编辑模型 | 1d | 2016-06-30 | 2016-06-30 |
| 229 | 1.2.2.2.9.5.1.4.2 | 编辑分类 | 1d | 2016-06-30 | 2016-06-30 |
| 230 | 1.2.2.2.9.5.1.5 | **删除商品** | 1d | 2016-06-30 | 2016-06-30 |
| 231 | 1.2.2.2.9.5.1.5.1 | 删除模型、分类关系 | 1d | 2016-06-30 | 2016-06-30 |
| 232 | 1.2.2.2.9.5.2 | **订单管理** | 1d | 2016-06-30 | 2016-06-30 |
| 233 | 1.2.2.2.9.5.2.1 | **分页列表查找** | 1d | 2016-06-30 | 2016-06-30 |
| 234 | 1.2.2.2.9.5.2.1.1 | 快捷筛选 | 1d | 2016-06-30 | 2016-06-30 |
| 235 | 1.2.2.2.9.5.2.2 | 内容详情 | 1d | 2016-06-30 | 2016-06-30 |
| 236 | 1.2.2.2.9.6 | **会员管理** | 1d | 2016-06-30 | 2016-06-30 |
| 237 | 1.2.2.2.9.6.1 | **分页会员列表** | 1d | 2016-06-30 | 2016-06-30 |
| 238 | 1.2.2.2.9.6.1.1 | 管理员筛选 | 1d | 2016-06-30 | 2016-06-30 |
| 239 | 1.2.2.2.9.6.2 | 会员详情 | 1d | 2016-06-30 | 2016-06-30 |
| 240 | 1.2.2.2.9.6.3 | 授权管理员 | 1d | 2016-06-30 | 2016-06-30 |

| ID | WBS | Task | Duration | Start | Finish |
| --- | --- | --- | --- | --- | --- |
| 241 | 1.2.2.2.9.7 | **公众人物管理员** | 1d | 2016-06-30 | 2016-06-30 |
| 242 | 1.2.2.2.9.7.1 | **分页会员申请列表** | 1d | 2016-06-30 | 2016-06-30 |
| 243 | 1.2.2.2.9.7.1.1 | 同意、驳回、未处理快捷筛选 | 1d | 2016-06-30 | 2016-06-30 |
| 244 | 1.2.2.2.9.7.2 | 申请详情 | 1d | 2016-06-30 | 2016-06-30 |
| 245 | 1.2.2.2.9.7.3 | 意见处理（同意、驳回） | 1d | 2016-06-30 | 2016-06-30 |
| 246 | 1.3 | 测试 | 1d | 2016-06-30 | 2016-06-30 |
| 247 | 1.4 | 部署 | 1d | 2016-06-30 | 2016-06-30 |
